kind,wbs,linear,task,owner,phase,status,start,end,depends_on,constraint,milestone,date_source
task,1.1,SCO-117,Submit the senior design budget (SCU funding request),David Chousal Cantu,Phase 1,Done,2026-10-06,2026-10-16,,Lab budget was due the week of 2026-09-28 (overdue); SCU funding request deadline Oct 18; must match the parts order,Funding request submitted,Linear due
task,1.3,SCO-140,Map the layered test protocol and unit counts per stage,John Ryan Myrdal,Phase 1,Done,2026-10-10,2026-10-15,,Advisor asked for a layered test plan (2026-09-30 meeting),Test protocol drafted,Linear due
task,1.4,,Gantt chart and WBS for the course assignment,John Ryan Myrdal,Phase 1,In Progress,2026-10-06,2026-10-18,,Course deadline Oct 18; whole team,Gantt submitted,derived
task,1.5,SCO-149,Write an alternatives analysis for the main mechanical choices,John Ryan Myrdal,Phase 1,Deferred,2026-10-19,2026-11-06,,,,estimated
task,1.6,SCO-90 / SCO-95,LLC and patent strategy for SCOUT IP,John Ryan Myrdal,Phase 1,Backlog,2026-10-26,2026-11-25,,Possible advisor or university IP office input,,estimated
task,1.7,SCO-121,Decide a per-unit naming scheme for Scout prototypes,Unassigned,Phase 1,Backlog,2026-10-20,2026-10-30,,Unassigned in Linear; needs an owner and a team decision,,estimated
task,2.1,SCO-70,Deliver the final electronics component list and dimensions,Isabella Rodriguez,Phase 1,Done,2026-10-06,2026-10-08,,Overdue since 2026-09-04; blocks housing dimensions,Component list final,Linear due
task,2.2,SCO-116,Take the full electronics design to Shoba for a power and solar review,Isabella Rodriguez,Phase 1,Done,2026-10-08,2026-10-09,,Shoba's availability,Design review complete,proposed
task,2.3,SCO-115,"Bench parts order arrives (Feather M0, Adalogger, sensors, boost, TPL5111)",Isabella Rodriguez,Phase 1,Done,2026-10-09,2026-10-09,SCO-70 SCO-116,Vendor shipping; ordered through Dr. Krishnan 2026-10-05; arrival date assumed,Parts arrive,Linear due
task,2.4,SCO-142,Inventory spare sensors and boards in advisor and team labs,Isabella Rodriguez,Phase 1,Done,2026-10-07,2026-10-12,,Needs advisor and lab access,,proposed
task,2.5,SCO-8,Decide the hydrophone part (H2a-XLR vs H2dM),Isabella Rodriguez,Phase 1,Done,2026-10-12,2026-10-16,,Hydrophone not in the bench order,Decision recorded,Linear due
task,2.6,SCO-10,Re-scope or close the LiFePO4 charging-path decision (ADR-0002),Isabella Rodriguez,Phase 1,Canceled,2026-10-14,2026-10-19,,Overtaken if ADR-0007 (Li-SOCl2 primary cell) is accepted; unblocks SCO-83,Decision recorded,proposed
task,2.7,SCO-150,Make it impossible to charge or short the primary D cell,Isabella Rodriguez,Phase 1,Todo,2026-10-09,2026-10-14,SCO-115,Fire-safety layers must exist before any real cell; bench uses a current-limited supply,,Linear due
task,2.8,SCO-152,"Bring up the bench breadboard: DS18B20, RTC, microSD, Grove turbidity wiring",Isabella Rodriguez,Phase 1,Todo,2026-10-12,2026-10-13,SCO-115,Needs the parts to arrive; bench supply and uA meter reserved,Bench bring-up complete,Linear due
task,2.9,SCO-23,Measure sleep current against the <5 mA target,Isabella Rodriguez,Phase 1,Todo,2026-10-13,2026-10-14,SCO-152 SCO-115,uA-range multimeter; 3.6 V current-limited supply,,Linear due
task,2.10,SCO-151,Prove TPL5111 power-gating cuts the sleep floor to ~20 uA,Isabella Rodriguez,Phase 1,Deferred,2026-10-14,2026-10-15,SCO-23 SCO-115,Firmware cold-boot support from David (SCO-25),,Linear due
task,2.11,SCO-153,"Measure the Grove turbidity sensor: current, settle time, inrush, polarity",Isabella Rodriguez,Phase 1,Todo,2026-10-14,2026-10-16,SCO-152 SCO-115,Oscilloscope for inrush,,proposed
task,2.12,SCO-154,Measure LoRa transmit current at +11 dBm,Isabella Rodriguez,Phase 1,Todo,2026-10-16,2026-10-19,SCO-152,1 ohm shunt; re-check after SCO-98,,proposed
task,2.13,SCO-155,Run the RFM95 link test with a second radio,Isabella Rodriguez,Phase 1,In Progress,2026-10-15,2026-11-17,SCO-152 SCO-115,Second radio is not in the 10-05 order; lab stock or a new order,Radio link proven,estimated
task,2.14,SCO-47,Design the SEN0189 analog front end as non-inverting,Isabella Rodriguez,Phase 1,Canceled,2026-09-01,2026-10-16,SCO-115,Polarity must not invert; bench check after parts arrive; Design started 2026-09-01; bench verification follows SCO-115 and SCO-153,,Linear due
task,2.15,SCO-87,Implement per-sensor power switching via transistors,Isabella Rodriguez,Phase 1,Todo,2026-10-16,2026-10-21,SCO-152 SCO-153,V1-required on a primary cell,,proposed
task,2.16,SCO-60,Add an internal temp/humidity sensor for State-of-Health,Isabella Rodriguez,Phase 1,Todo,2026-10-12,2026-10-15,,,,proposed
task,2.17,SCO-156,Document the bench wiring: labeled photo and schematic sketch to /hardware,Isabella Rodriguez,Phase 1,Todo,2026-10-19,2026-10-20,SCO-152 SCO-153,Phase 1 exit item,Phase 1 hardware exit,proposed
task,2.18,SCO-83,Implement battery-voltage telemetry,Isabella Rodriguez,Phase 1,Todo,2026-10-19,2026-10-23,SCO-10,Depends on the battery chemistry decision,,Linear due
task,2.19,SCO-18 / SCO-84,Chlorophyll fluorometer feasibility and battery connector polarity check,Isabella Rodriguez,Phase 2,Deferred,2026-11-03,2026-11-25,,Deferred in Linear; not this version,,proposed
task,3.1,SCO-25,Validate the Phase-1 SAMD21 drivers on real hardware,David Chousal Cantu,Phase 1,Blocked,2026-10-13,2026-11-06,SCO-115 SCO-152,Needs the Feather M0 from the bench order,Drivers validated on hardware,Linear due
task,3.2,SCO-24,Bring up the real LoRa receiver on the shore station,David Chousal Cantu,Phase 1,Done,2026-10-16,2026-10-30,SCO-115 SCO-155,"Linear due 10-16 moved to 10-30: shore parts (Feather S3, LoRa module) are not ordered yet",,Linear due
task,3.3,SCO-98,Bench-verify the FCC-compliant LoRa modem config,David Chousal Cantu,Phase 1,In Test,2026-10-16,2026-10-20,SCO-155 SCO-115,Config is merged; only bench verification remains,,estimated
task,3.4,SCO-12,Calibrate the Grove turbidity sensor against formazin standards (FAU),David Chousal Cantu,Phase 2,Blocked,2026-11-03,2026-11-20,SCO-189 SCO-153,"Waits on the Grove sensor (SCO-189, in transit); Linear due 11/20",,estimated
task,3.5,SCO-104,Faculty or a compliance lab review of the FCC 915 MHz findings,David Chousal Cantu,Phase 1,Done,2026-10-12,2026-10-23,,Reviewer availability,,estimated
task,3.6,SCO-26 / SCO-27,Fix the run_pipeline flag inconsistency and recover the missing Sesoko recording,David Chousal Cantu,Phase 1,Backlog,2026-10-19,2026-10-30,,Recording may need the original data source,,estimated
task,3.7,SCO-119 / SCO-97,Adopt Navid's sleep/wake protocol and re-derive the packet ceiling,David Chousal Cantu,Phase 2,Backlog,2026-10-26,2026-11-13,,,,estimated
task,3.8,SCO-120 / SCO-57 / SCO-58,"Review the IoT dashboard, add biofouling state to the Fleet page, improve the PNG dashboard",David Chousal Cantu,Phase 2,Backlog,2026-11-02,2026-11-25,,,Phase 2 software exit,estimated
task,3.9,SCO-20 / SCO-67,Drift reference and acoustic tamper detection,David Chousal Cantu,Phase 2,Deferred,2026-11-09,2026-11-25,,Deferred in Linear; not this version,,estimated
task,4.1,SCO-105,Reprint the face-seal clamp and record the failing O-ring tolerance,John Ryan Myrdal,Phase 1,Done,2026-10-08,2026-10-12,,Printer access,,Linear due
task,4.3,SCO-108,Submersion re-test the face-seal joint on the clamp and sensor pod,John Ryan Myrdal,Phase 1,In Test,2026-10-12,2026-10-16,SCO-105,"24 hr soaks; RR-14 result 10-07; RR-15 (6 bolts) after; Coupon re-tests (RR-14, RR-15) run now; the clamp re-test follows SCO-105 and SCO-106",Face seal passes a 24 hr soak,estimated
task,4.5,SCO-112,Grow the sensor pod dry chamber to 52 mm and re-export the penetration and flood chamber,John Ryan Myrdal,Phase 1,Canceled,2026-09-14,2026-10-13,,Epoxy-potted lead penetration,,Linear due
task,4.6,SCO-91,Validate the remodelled turbidity sensor housing face seal,John Ryan Myrdal,Phase 1,Done,2026-10-20,2026-10-23,SCO-108,,,Linear due
task,4.7,SCO-141,Start saltwater-bath leak tests on printed test capsules,John Ryan Myrdal,Phase 1,Canceled,2026-10-08,2026-11-11,,1 week soak at about 35 ppt,,Linear due
task,4.10,SCO-107,Finish the electronics housing lid: bolt clearance holes and marking wording,John Ryan Myrdal,Phase 1,Done,2026-10-13,2026-10-15,,,,Linear due
task,4.11,SCO-103,Engrave the FCC ID label into the enclosure before printing,John Ryan Myrdal,Phase 1,Done,2026-10-09,2026-10-12,,"Engraved before the final print (related to SCO-107 and SCO-93, not blocked by them)",,Linear due
task,4.12,SCO-122,Order the stainless fasteners once the housing is dimensioned,John Ryan Myrdal,Phase 1,Canceled,2026-10-14,2026-10-17,,Vendor lead time; ordered only after SCO-49 fixes the housing dimensions,,Linear due
task,4.13,SCO-68,Design the chassis top section: sealing and service-access port,John Ryan Myrdal,Phase 1,Done,2026-09-03,2026-10-21,SCO-107 SCO-105,,,Linear due
task,4.17,SCO-63,Bring the large lab 3D printer back online,John Ryan Myrdal,Phase 1,Canceled,2026-10-07,2026-10-16,,Lab technician or advisor help,,Linear due
task,4.18,SCO-76,Run foam-fill manufacturing trials on sacrificial wedges,John Ryan Myrdal,Phase 1,Canceled,2026-10-19,2026-10-21,SCO-166,Printer access for sacrificial wedges,,Linear due
task,4.19,SCO-123,Publish up-to-date v5 drawings for the wedge and wedge bottom,John Ryan Myrdal,Phase 1,Canceled,2026-10-15,2026-10-15,,,,Linear due
task,4.20,SCO-124,Rebuild the freeboard model's vertical stack from the STEP geometry,John Ryan Myrdal,Phase 1,Done,2026-09-29,2026-10-12,,v7 STEP committed 2026-10-06,,estimated
task,4.23,SCO-73,FEA on the ballast stem and its chassis joint (earlier LC1-LC9 runs stand),John Ryan Myrdal,Phase 1,Canceled,2026-10-26,2026-11-06,SCO-125,Blocked by SCO-49; Linear due unset,,estimated
task,4.24,SCO-135,Re-run LC7 with the mooring moved to the pipe collar,John Ryan Myrdal,Phase 1,Canceled,2026-10-14,2026-10-14,,,,Linear due
task,4.25,SCO-125,Develop the self-righting ballast stem to 24 in below the keel,John Ryan Myrdal,Phase 1,Canceled,2026-10-13,2026-10-23,SCO-136,Lead ballast permit question (SCO-136),,Linear due
task,4.26,SCO-136,Check whether lead ballast is acceptable under the reef permit,John Ryan Myrdal,Phase 1,Canceled,2026-10-12,2026-10-12,,Permit authority answer,,Linear due
task,4.27,SCO-137,"Confirm the swivel, U-bolt and AS568-247 part numbers",John Ryan Myrdal,Phase 1,Canceled,2026-10-12,2026-10-12,,,,Linear due
task,4.28,SCO-77,Define the marine fastener and anti-loosening strategy,John Ryan Myrdal,Phase 1,Done,2026-10-16,2026-10-16,,,,Linear due
task,4.29,SCO-72,Identify a propeller-resistant mooring/tether line,John Ryan Myrdal,Phase 1,Backlog,2026-10-21,2026-10-30,,,,estimated
task,4.30,SCO-94 / 144 / 145 / 146 / 147 / 148,"Design improvement studies (inserts, cable routing, modular rod, split chassis, float-free, manufacturability)",John Ryan Myrdal,Phase 1,Backlog,2026-10-27,2026-11-25,,,,estimated
task,4.31,SCO-54 / SCO-56,Refine the stem and solar mount; audit the Onshape Initial Frame folder,John Ryan Myrdal,Phase 1,Backlog,2026-10-19,2026-11-25,,,Phase 2 mechanical exit,Linear due
task,4.32,SCO-61 / SCO-66,Design the snap-connector sensor string; produce an exploded-view animation,John Ryan Myrdal,Phase 2,Backlog,2026-11-03,2026-11-25,,,,Linear due
task,4.33,SCO-92 / SCO-64 / SCO-78 / SCO-79,"Corrosion strategy, material samples, marine coating, biofouling features",John Ryan Myrdal,Phase 3,Todo / Backlog,2026-11-30,2027-01-15,,Winter break; printer access,Phase 3 exit,estimated
task,5.1,SCO-143,Identify a local backup test site and request pool access,John Ryan Myrdal,Phase 1,Backlog,2026-10-12,2026-10-30,,Site owner's permission,,estimated
milestone,M2,,Bench parts arrive (assumed Fri),All,Phase 1,,2026-10-09,2026-10-09,,Assumption; confirm with Isabella,Parts arrive,Linear
milestone,M1,,Component list delivered; unblocks housing dimensions,Isabella Rodriguez,Phase 1,,2026-10-08,2026-10-08,,,Component list final,estimated
milestone,M3,,Phase 1 exit: subsystem bring-up complete,All,Phase 1,,2026-10-16,2026-10-16,,Phase 1 project window,Phase 1 exit,estimated
deadline,D1,,SCU: Undergraduate Programs Project Funding Request due; Gantt chart due,All,Phase 1,,2026-10-18,2026-10-18,,SCU Senior Design Resources page,Funding request and Gantt submitted,Linear
milestone,M4,,Phase 2 starts: system integration,All,Phase 2,,2026-10-19,2026-10-19,,,,estimated
milestone,M5,,Phase 2 exit,All,Phase 2,,2026-11-25,2026-11-25,,,Phase 2 exit,estimated
milestone,M6,,Phase 3 exit: enclosure and waterproofing,All,Phase 3,,2027-01-15,2027-01-15,,,Phase 3 exit,estimated
deadline,D2,,SCU: Senior Design Conference registration closes (winter),All,Phase 4,,2027-02-01,2027-02-01,,SCU Senior Design Resources page,,Linear
task,4.35,SCO-166,"Source the 2 lb pour foam (US Composites #0204, about 3 kits)",John Ryan Myrdal,Phase 1,Deferred,2026-10-08,2026-10-16,,No foam on hand; vendor shipping time; unblocks the foam trials and the foam-filled buoy,Foam on hand,Linear due
task,4.36,SCO-167,"Source PETG filament for the second full buoy (about 4 to 5 kg, to confirm)",John Ryan Myrdal,Phase 1,Done,2026-10-08,2026-10-14,,Vendor shipping time; the second print waits on it,Filament on hand,Linear due
task,4.37,SCO-168,Source Instant Ocean sea salt and a salinity meter for the 35 ppt tub tests,John Ryan Myrdal,Phase 1,Canceled,2026-10-12,2026-10-12,,Big bin volume to measure first,Salt water ready,Linear due
task,4.38,SCO-169,Finish J-B Weld on the remaining exterior seams of the assembled buoy,John Ryan Myrdal,Phase 1,Done,2026-10-12,2026-10-12,,Epoxy cure time before water,,Linear due
task,4.39,SCO-170,TEST: dry-float the buoy in a bin; waterline and freeboard vs the 4.27 in model,John Ryan Myrdal,Phase 1,Done,2026-10-16,2026-10-16,SCO-124 SCO-169,Big plastic bin; benchmark within +-0.5 in (placeholder until SCO-139),First float check,Linear due
task,4.40,SCO-171,TEST: self-righting tilt test from 90 and 180 degrees,John Ryan Myrdal,Phase 2,Todo,2026-11-02,2026-11-05,,Proposed 11/2-11/3 (Linear due 11/17 is too late for the soak); needs the printed buoy and a tub,Buoy rights itself,Linear due
task,4.41,SCO-172,TEST: float the whole buoy in 35 ppt salt water; record the waterline shift,John Ryan Myrdal,Phase 2,Done,2026-11-03,2026-11-04,SCO-171 SCO-277,"Proposed; needs salt, meter and the tub (SCO-277, SCO-262); salinity verified at 35 ppt first",Saltwater float passed,estimated
task,4.42,SCO-173,TEST: drop a sacrificial assembled ring with 1.5 in caps,John Ryan Myrdal,Phase 2,Todo,2026-10-19,2026-10-22,SCO-170,"Spare parts only, not the soak buoy",,Linear due
task,4.43,SCO-174,TEST: proof-load the mooring attachment and ballast-arm root to 1.5x the LC9 snap,John Ryan Myrdal,Phase 2,Canceled,2026-10-23,2026-10-30,SCO-137,Load method to choose; placeholder pass mark 1.2 kN,,Linear due
task,4.44,SCO-175,"Build the final turbidity pod with the SEN0189 (dry chamber 52 mm, 6 bolts)",John Ryan Myrdal,Phase 1,Duplicate,2026-10-20,2026-10-20,SCO-112 SCO-108,SEN0189 arrives with the bench order; printer access,Final pod built,Linear due
task,4.45,SCO-176,TEST: 1-week saltwater soak of the final turbidity pod with the Grove sensor live,John Ryan Myrdal,Phase 2,Todo,2026-11-09,2026-11-24,SCO-175 SCO-91,"Needs the Grove sensor (SCO-189, waiting on parts); Linear due 11/24",Turbidity pod line complete,Linear due
task,4.46,SCO-177,TEST: pressure-test the sealed housings to 8 m equivalent for 24 hr,John Ryan Myrdal,Phase 2,Todo,2026-11-17,2026-11-19,SCO-162,Proposed; Linear due 11/9 cannot hold if it follows the pod soak,,estimated
task,4.47,SCO-178,Print the second full buoy set (the foam-filled unit),John Ryan Myrdal,Phase 1,Deferred,2026-10-14,2026-10-28,SCO-167,Industrial printer or Prusa XL windows; chassis alone is about 35 hr,Second buoy printed,Linear due
task,4.48,SCO-179,"Assemble, seal and foam-fill the second buoy",John Ryan Myrdal,Phase 2,Deferred,2026-10-28,2026-11-04,SCO-178 SCO-166 SCO-76,Foam trial results; full cure before water,Foam buoy ready,Linear due
task,4.49,SCO-180,"TEST: 4-week saltwater float soak, no foam (unit 1)",John Ryan Myrdal,Phase 2,Todo,2026-11-04,2026-12-11,SCO-172,"Proposed: must start by 11/5 to end 12/3; Linear due 12/11; 4 weeks, weekly weigh-in, Thanksgiving week",Unit 1 soak complete,Linear due
task,4.50,SCO-181,"TEST: 4-week saltwater float soak, injected foam (unit 2)",John Ryan Myrdal,Phase 2,Deferred,2026-11-04,2026-12-02,SCO-179 SCO-168,Same bin routine as unit 1; must end by Dec 4,Foam vs no-foam comparison,Linear due
task,4.51,SCO-182,"TEST: integrated MVP test: electronics in the floating buoy, sensors read, packet at the shore station",John Ryan Myrdal,Phase 2,Todo,2026-12-03,2026-12-04,SCO-278 SCO-279,"Proposed; waits on the soak, the pod soak, the end-to-end rehearsal and the integration build; hard limit Dec 11",MVP functional prototype,estimated
task,5.2,SCO-183,"Plan the ocean flotation test: site, permission, boat or pier, safety",John Ryan Myrdal,Phase 2,Todo,2026-11-09,2026-11-20,,Site owner or harbour permission; the test itself is after winter break,Ocean test planned,Linear due
task,5.3,SCO-184,TEST: real-ocean flotation test (after winter break),John Ryan Myrdal,Phase 4,Todo,2027-01-25,2027-01-29,SCO-183 SCO-181,Winter break; sea state and permit window,Ocean flotation passed,Linear due
task,2.20,,"TEST: every sensor reads data (DS18B20 temperature and Grove turbidity) in a water bath, 24 hr log",Isabella Rodriguez,Phase 1,Proposed,2026-10-16,2026-10-22,SCO-152 SCO-153,"Proposed by John, not in Linear; needs the bench parts and the SEN0189 front end",All sensors read,proposed
task,2.21,,"TEST: data accuracy: temperature vs a reference thermometer, turbidity vs formazin standards",Isabella Rodriguez,Phase 2,Canceled,2026-10-30,2026-11-04,,Superseded by SCO-259 (temperature test and demo 11/4),Sensor accuracy shown,proposed
task,2.22,,TEST: data transmission: a sensor packet goes over LoRa to the shore station and matches the logged value,Isabella Rodriguez,Phase 2,Proposed,2026-11-17,2026-11-18,SCO-155 SCO-24 SCO-98,"Proposed by John, not in Linear; waits on the shore receiver (David, SCO-24, his dates unchanged)",Packet delivered end to end,proposed
task,2.23,SCO-158,"Place the three follow-up electronics orders (D cells, hydrophone, outdoor antenna)",Isabella Rodriguez,Phase 2,Todo,2026-10-19,2026-10-26,,Proposed dates; Linear due is Nov 6; needs the D cells in hand for SCO-159,Follow-up parts ordered,proposed
task,2.24,SCO-159,TEST: run 7 days on two D cells and confirm a 12-month extrapolation,Isabella Rodriguez,Phase 2,Todo,2026-11-09,2026-11-25,SCO-158,"Proposed dates; Linear due is Nov 25; dependency proposed, not in Linear",Battery life extrapolated,Linear due
task,2.25,SCO-161,TEST: run the sealed buoy electronics 7 to 14 days in the housing,Isabella Rodriguez,Phase 2,Todo,2026-11-20,2026-11-27,SCO-162,"Proposed dates; Linear due is Dec 18; must end before Nov 30 for the MVP test; dependency proposed, not in Linear",Sealed run complete,estimated
task,3.10,SCO-160,TEST: run the standby duty-cycle loop unattended for 24 hr on the bench,David Chousal Cantu,Phase 2,Todo,2026-11-16,2026-11-17,,Linear due date; start estimated; not rescheduled,Standby loop proven,estimated
milestone,M7,,Turbidity pod line complete (final pod soaked 1 week),John Ryan Myrdal,Phase 2,,2026-10-30,2026-10-30,,Gate: SCO-176 passes,Pod line complete,estimated
milestone,M8,,"MVP functional prototype: floats, rights itself, reads one temperature and one turbidity value, packet at the shore station (target)",All,Phase 3,,2026-12-04,2026-12-04,,Decided 2026-10-07,MVP target,estimated
deadline,D3,,MVP hard limit: before winter break,All,Phase 3,,2026-12-11,2026-12-11,,Decided 2026-10-07; Dec 4 is the target,,estimated
task,1.8,SCO-211,Get the hazard assessment form signed by Dr. Krishnan,John Ryan Myrdal,Phase 2,Done,2026-10-28,2026-11-04,,Form submitted 10/28; waiting on the advisor signature; blocks water-near-electronics lab work,Hazard form signed,estimated
task,1.9,SCO-260,Present the top-level system architecture and demos to Dr. Krishnan and Dr. Kuczenski,John Ryan Myrdal,Phase 2,Todo,2026-11-02,2026-11-06,,"Fri 11/6, 6 PM proposed; all three members present",System-diagram review,Linear due
task,1.10,SCO-262,Apply for Environmental Engineering storage space for the water test tub,John Ryan Myrdal,Phase 2,Canceled,2026-11-02,2026-11-06,,Needed before the 35 ppt float test and soak,,Linear due
task,1.11,SCO-188,Write a black-box integration doc per subsystem,John Ryan Myrdal,Phase 2,Todo,2026-11-02,2026-11-13,,Each member writes their own; read by the integration build,,estimated
task,2.26,SCO-258,Write the temperature sensor test protocol and send it to Shoba and Jes,Isabella Rodriguez,Phase 2,In Review,2026-10-28,2026-10-30,,"Due 10/29, late; becomes the template for every sensor",Protocol sent,Linear due
task,2.27,SCO-259,Run the temperature sensor test and demo it in the lab,Isabella Rodriguez,Phase 2,In Test,2026-10-30,2026-11-04,SCO-258,Wed 11/4 advisor demo; water on the table is fine,First sensor working,Linear due
task,2.28,SCO-189,Order the turbidity sensor and a spare,Isabella Rodriguez,Phase 2,Done,2026-10-26,2026-11-02,,"Mouser order in transit; blocks turbidity calibration, the pod soak and the MVP",,estimated
task,2.29,SCO-216,Reuse the earlier team's hydrophone amplifier design,Isabella Rodriguez,Phase 2,Todo,2026-10-30,2026-11-06,,Needs Ben's thesis design from Shoba and Dr. Wolf,,Linear due
task,2.30,SCO-204,Calibrate the internal humidity sensor with known amounts of water,Isabella Rodriguez,Phase 2,Todo,2026-11-09,2026-11-13,,Turns the 70 %RH placeholder into a measured threshold,,Linear due
task,3.11,SCO-237,Push received readings from the shore station to the dashboard over WiFi,David Chousal Cantu,Phase 2,In Test,2026-10-28,2026-11-06,,Merged 10/29; bench-unverified,,estimated
task,3.12,SCO-278,"TEST: end-to-end rehearsal, buoy reading to shore station to dashboard, 48 h on the bench",David Chousal Cantu,Phase 2,Backlog,2026-11-18,2026-11-20,SCO-160 SCO-237 SCO-152,Needs the bench bring-up; feeds the integrated MVP test,Full chain proven,Linear due
task,4.52,SCO-277,Buy sea salt and a salinity meter for the 35 ppt tests,John Ryan Myrdal,Phase 2,Done,2026-10-30,2026-11-02,,Critical path: every day of delay moves the soak and the MVP,,Linear due
task,4.53,SCO-270,Print the electronics housing cap; gland fit coupon first,John Ryan Myrdal,Phase 2,Done,2026-10-30,2026-10-31,,Printing 10/30; log weight and seal fit,,Linear due
task,4.54,SCO-243,CAD the eye and attachment points (side through holes),John Ryan Myrdal,Phase 2,Canceled,2026-10-30,2026-10-30,,Finishing 10/30,,Linear due
task,4.55,SCO-276,"Re-run the hang-hole FEA with PETG, a refined mesh and the right loads",John Ryan Myrdal,Phase 2,Done,2026-11-02,2026-11-06,SCO-243,Pass mark SF >= 4 at the hole edge,Hang point validated,estimated
task,4.56,SCO-250,"Reconcile the lid layout for the top attachment, SMA bulkhead and two-D-cell bay",John Ryan Myrdal,Phase 2,Todo,2026-11-02,2026-11-06,SCO-270,Uses the cap STEP with sideways glands,,Linear due
task,4.57,SCO-246,Choose the waterproof coating system and source it,John Ryan Myrdal,Phase 2,Todo,2026-10-30,2026-11-06,,Choose 10/30; buy tentative coating this weekend,,Linear due
task,4.58,SCO-247,Apply and cure the waterproof coating on both buoys,John Ryan Myrdal,Phase 2,In Progress,2026-11-06,2026-11-21,SCO-246,Cure time per the coating's data sheet,,estimated
task,4.59,SCO-162,Add the SMA antenna bulkhead and two-D-cell bay to the lid,John Ryan Myrdal,Phase 2,In Progress,2026-11-06,2026-11-16,SCO-250,,,estimated
task,4.60,SCO-249,"Define the hung-from-dock V1 test rig, deployment and retrieval",John Ryan Myrdal,Phase 2,Todo,2026-11-06,2026-11-10,SCO-243,,,Linear due
task,4.61,SCO-244,Print the top attachments and proof-load them to about 1.5x the hung load,John Ryan Myrdal,Phase 2,Canceled,2026-11-06,2026-11-13,SCO-276,,,Linear due
task,4.62,SCO-245,Submersion re-test the seal with the top attachment installed,John Ryan Myrdal,Phase 2,Todo,2026-11-13,2026-11-20,SCO-244,,,Linear due
task,4.63,SCO-248,Float-test the wedge/ring buoy with the full payload,John Ryan Myrdal,Phase 2,Todo,2026-11-10,2026-11-13,,,,Linear due
task,4.64,SCO-253,Produce updated drawings of the new components,John Ryan Myrdal,Phase 2,Todo,2026-11-13,2026-11-20,SCO-250,,,Linear due
task,4.65,SCO-279,Integration build: electronics and sensor pod installed in the printed buoy and sealed,John Ryan Myrdal,Phase 2,Backlog,2026-11-30,2026-12-01,SCO-270 SCO-250 SCO-247 SCO-161,Proposed; needs the sealed electronics run to finish 11/28,Complete buoy assembled,estimated
milestone,M9,,"FULL SYSTEM INTEGRATION (fall goal): sealed floating buoy reads temperature and turbidity, packet reaches the shore station and the dashboard",All,Phase 2,,2026-12-04,2026-12-04,,Linear milestone: Full system integration (fall goal); hard limit Dec 11,Full system integration,Linear
milestone,M10,,First sensor working: temperature test demoed to the advisors,All,Phase 2,,2026-11-04,2026-11-04,,,First sensor working,Linear
milestone,M11,,Soak started: unit 1 in 35 ppt salt water (latest start to finish by 12/3),All,Phase 2,,2026-11-04,2026-11-04,,,Soak started,estimated
milestone,M12,,"Phase 4 exit: field prototype deployed, two-week local test done",All,Phase 4,,2027-02-26,2027-02-26,,,,Linear
milestone,M13,,"Phase 5 exit: Hawaii deployment prep done, hardware shipped",All,Phase 5,,2027-03-19,2027-03-19,,,,Linear
milestone,M14,,Hawaii live deployment starts (site and permits to be confirmed),All,Phase 6,,2027-03-22,2027-03-22,,,,Linear
milestone,M15,,Project end: final report and data from the deployment,All,Phase 6,,2027-05-28,2027-05-28,,,,Linear
